# House Build

Schedule from ProjectLibre, 2024-01-26 to 2025-10-01.

## Calendars

- Standard: Mon-Fri 08:00-12:00, 13:00-17:00; Sat-Sun off.

## Resources

| Resource |
| --- |
| Unassigned |

## Schedule

| ID | WBS | Task | Type | Duration | Start | Finish | Predecessors | Complete | Constraint |
| --- | --- | --- | --- | --- | --- | --- | --- | --- | --- |
| 1 | 1 | Contribution charge commencement deadline | milestone | 0d | 2024-01-26 | 2024-01-26 |  |  | finish no later than 2024-04-24 |
| 2 | 2 | Stamp duty commencement deadline | milestone | 0d | 2024-12-31 | 2024-12-31 |  |  | must finish on 2024-12-31 |
| 3 | 3 | Self build insurance ends | milestone | 0d | 2025-10-01 | 2025-10-01 |  |  | must finish on 2025-10-01 |
| 4 | 4 | **Prepare site for foundations install** |  | 87d | 2024-04-01 | 2024-07-30 |  | 9% | start no earlier than 2024-04-01 |
| 5 | 4.1 | Level and compact 200mm of T2 stone as subfoundation |  | 5d | 2024-04-01 | 2024-04-05 | 14 | 100% |  |
| 6 | 4.2 | General arrangement drawings |  | 15d | 2024-04-22 | 2024-05-10 |  |  | start no earlier than 2024-04-22 |
| 7 | 4.3 | Structural engineering drawings |  | 15d | 2024-05-13 | 2024-05-31 | 6 |  |  |
| 8 | 4.4 | Offsite manufacture of timber frames |  | 25d | 2024-06-03 | 2024-07-05 | 7 |  | start no earlier than 2024-06-01 |
| 9 | 4.5 | Surveyor to mark out service popups |  | 20d | 2024-06-03 | 2024-06-28 | 7 |  |  |
| 10 | 4.6 | Install pipes popping up into house with +/- 5mm tolerance |  | 2d | 2024-07-01 | 2024-07-02 | 5, 6, 9, 11 |  |  |
| 11 | 4.7 | Hardcore site for heavy vehicles |  | 5d | 2024-04-01 | 2024-04-05 |  | 100% |  |
| 12 | 4.8 | Scaffolding erected around house + loading bays (ticketed) |  | 2d | 2024-05-13 | 2024-05-14 | 6, 14 |  |  |
| 13 | 4.9 | Surveyor to return to check service popups again |  | 20d | 2024-07-03 | 2024-07-30 | 10 |  |  |
| 14 | 4.10 | Self build insurance |  | 0d | 2024-04-01 | 2024-04-01 |  | 100% |  |
| 15 | 5 | Foundations install |  | 5d | 2024-07-31 | 2024-08-06 | 4 |  |  |
| 16 | 6 | Timber frame install |  | 5d | 2024-08-07 | 2024-08-13 | 15 |  |  |
| 17 | 7 | **Exterior** |  | 75d | 2024-08-14 | 2024-11-26 | 16 |  |  |
| 18 | 7.1 | Wall glazing |  | 40d | 2024-08-14 | 2024-10-08 |  |  |  |
| 19 | 7.2 | Insulated thermal window brackets |  | 3d | 2024-10-09 | 2024-10-11 | 18 |  |  |
| 20 | 7.3 | Insulated window sills |  | 5d | 2024-10-09 | 2024-10-15 | 18 |  |  |
| 21 | 7.4 | Flat roof install |  | 2d | 2024-08-14 | 2024-08-15 |  |  |  |
| 22 | 7.5 | Roof slates + solar PV rails install |  | 5d | 2024-08-14 | 2024-08-20 |  |  |  |
| 23 | 7.6 | External cavity wiring |  | 2d | 2024-08-14 | 2024-08-15 |  |  |  |
| 24 | 7.7 | Entrance door |  | 1d | 2024-08-14 | 2024-08-14 |  |  |  |
| 25 | 7.8 | First air tightness blower test |  | 2d | 2024-10-16 | 2024-10-17 | 18, 19, 20, 22, 23, 24 |  |  |

| ID | WBS | Task | Duration | Start | Finish | Predecessors |
| --- | --- | --- | --- | --- | --- | --- |
| 26 | 7.9 | **Exterior leaf** | 15d | 2024-10-18 | 2024-11-07 | 25 |
| 27 | 7.9.1 | Blocks to west, south, east, some of north | 7d | 2024-10-18 | 2024-10-28 |  |
| 28 | 7.9.2 | Charred larch leaf to north | 3d | 2024-10-18 | 2024-10-22 |  |
| 29 | 7.9.3 | Fascia and soffit | 5d | 2024-10-18 | 2024-10-24 |  |
| 30 | 7.9.4 | External leaf render | 10d | 2024-10-25 | 2024-11-07 | 29 |
| 31 | 7.10 | **After remove scaffolding** | 13d | 2024-11-08 | 2024-11-26 | 26 |
| 32 | 7.10.1 | **Exterior services** | 5d | 2024-11-08 | 2024-11-14 |  |
| 33 | 7.10.1.1 | Soakaways and SUDS boxes | 2d | 2024-11-08 | 2024-11-11 |  |
| 34 | 7.10.1.2 | Exterior foulwater and stormwater | 5d | 2024-11-08 | 2024-11-14 |  |
| 35 | 7.10.1.3 | Bury 150m of brine loop pipe for ventilation | 2d | 2024-11-08 | 2024-11-11 |  |
| 36 | 7.10.1.4 | Suspended rainwater harvesting tanks | 1d | 2024-11-08 | 2024-11-08 |  |
| 37 | 7.10.2 | Footpaths and patio | 5d | 2024-11-15 | 2024-11-21 | 32 |
| 38 | 7.10.3 | Driveway | 3d | 2024-11-22 | 2024-11-26 | 37 |
| 39 | 8 | Construct rear earthern mound | 2d | 2024-11-12 | 2024-11-13 | 35 |
| 40 | 9 | Complete walled garden after filling with topsoil | 2d | 2024-11-22 | 2024-11-25 | 35, 37 |
| 41 | 10 | Level ground ready for grass seeding | 1d | 2024-11-26 | 2024-11-26 | 37, 39, 40 |
| 42 | 11 | **Interior** | 110d | 2024-08-14 | 2025-01-14 | 16 |
| 43 | 11.1 | **First fix** | 74d | 2024-08-14 | 2024-11-25 |  |
| 44 | 11.1.1 | Stairs | 2d | 2024-08-14 | 2024-08-15 |  |
| 45 | 11.1.2 | First fix internal AC wiring | 10d | 2024-10-09 | 2024-10-22 | 18, 23, 24 |
| 46 | 11.1.3 | **First fix internal DC wiring** | 30d | 2024-10-09 | 2024-11-19 | 18 |
| 47 | 11.1.3.1 | 24v DC wiring | 10d | 2024-10-09 | 2024-10-22 |  |
| 48 | 11.1.3.2 | 9v DC wiring | 10d | 2024-10-23 | 2024-11-05 | 47 |
| 49 | 11.1.3.3 | 54v DC wiring + ethernet | 10d | 2024-11-06 | 2024-11-19 | 48 |

| ID | WBS | Task | Duration | Start | Finish | Predecessors |
| --- | --- | --- | --- | --- | --- | --- |
| 50 | 11.1.4 | **First fix internal plumbing** | 10d | 2024-10-09 | 2024-10-22 | 18 |
| 51 | 11.1.4.1 | Water softener | 1d | 2024-10-09 | 2024-10-09 |  |
| 52 | 11.1.4.2 | Reverse osmosis unit | 1d | 2024-10-09 | 2024-10-09 |  |
| 53 | 11.1.4.3 | Underfloor heating | 3d | 2024-10-09 | 2024-10-11 |  |
| 54 | 11.1.4.4 | Thermal store | 10d | 2024-10-09 | 2024-10-22 |  |
| 55 | 11.1.5 | Ventilation system | 10d | 2024-11-12 | 2024-11-25 | 35, 45, 47, 54 |
| 56 | 11.1.6 | Fire mist suppression system | 1d | 2024-10-23 | 2024-10-23 | 50 |
| 57 | 11.1.7 | Paint steel its final colour | 5d | 2024-08-14 | 2024-08-20 |  |
| 58 | 11.2 | Second air tightness blower test | 1d | 2024-11-26 | 2024-11-26 | 43 |
| 59 | 11.3 | Install plasterboard and skim | 10d | 2024-11-27 | 2024-12-10 | 58 |
| 60 | 11.4 | Paint everything white | 10d | 2024-12-11 | 2024-12-24 | 59 |
| 61 | 11.5 | **Second fix** | 15d | 2024-12-25 | 2025-01-14 | 60 |
| 62 | 11.5.1 | Affix all sockets and switches and lights | 5d | 2024-12-25 | 2024-12-31 |  |
| 63 | 11.5.2 | Install showers, baths and tiling for them | 10d | 2024-12-25 | 2025-01-07 |  |
| 64 | 11.5.3 | Install sanitaryware | 5d | 2024-12-25 | 2024-12-31 |  |
| 65 | 11.5.4 | Kitchen | 5d | 2024-12-25 | 2024-12-31 |  |
| 66 | 11.5.5 | Flooring | 15d | 2024-12-25 | 2025-01-14 |  |
| 67 | 11.5.6 | Wardrobes, book cases, shelving | 15d | 2024-12-25 | 2025-01-14 |  |
| 68 | 11.5.7 | Glass ballustrading for bridge and stairs | 3d | 2024-12-25 | 2024-12-27 |  |
